# Construction schedule v1.0

Schedule from an IFC model, 2027-03-01 to 2027-05-19.
Offshore Wind Turbine Foundation

## Schedule

| ID | Activity | Type | Duration | Start | Finish | Predecessors | Planned start | Planned finish | Total float | Free float | Resources |
| --- | --- | --- | --- | --- | --- | --- | --- | --- | --- | --- | --- |
| 1 | **1. Fabrication & preparation** |  | 34d | 2027-03-01 | 2027-04-10 |  | 2027-03-01 | 2027-03-05 | 0d |  |  |
| 1.1 | Monopile fabrication inspection |  | 5d | 2027-03-01 | 2027-03-05 |  |  |  | 0d |  | Survey contractor |
| 1.2 | Transition piece fabrication |  | 10d | 2027-03-06 | 2027-03-17 | 1.1 | 2027-03-01 | 2027-03-12 | 29d | 0d |  |
| 1.3 | Mobilise installation vessel |  | 8d | 2027-03-18 | 2027-03-27 | 1.2 | 2027-03-01 | 2027-03-10 | 29d | 0d | Offshore installation crew |
| 1.4 | Seabed survey |  | 5d | 2027-03-30 | 2027-04-03 | 1.3 | 2027-03-01 | 2027-03-05 | 29d | 0d | Survey contractor |
| 1.5 | Transport monopile |  | 5d | 2027-04-05 | 2027-04-09 | 1.4 | 2027-03-01 | 2027-03-05 | 29d | 0d | Transport barge |
| 1.6 | Start of offshore works | milestone | 0d | 2027-04-10 | 2027-04-10 | 1.5 | 2027-03-01 | 2027-03-01 | 29d |  |  |
| 2 | **2. Seabed preparation** |  | 11d | 2027-03-20 | 2027-04-03 |  | 2027-03-01 | 2027-03-05 | 0d |  |  |
| 2.1 | Level seabed |  | 5d | 2027-03-20 | 2027-03-25 | 1.1 SS+17d | 2027-03-01 | 2027-03-05 | 0d |  | Fall-pipe vessel |
| 2.2 | Scour protection, layer 1 |  | 3d | 2027-03-27 | 2027-03-31 | 2.1 | 2027-03-01 | 2027-03-03 | 5d | 0d | Fall-pipe vessel |
| 2.3 | Weather window monitoring |  | 3d | 2027-04-01 | 2027-04-03 | 2.2 | 2027-03-01 | 2027-03-03 | 5d |  |  |
| 3 | **3. Monopile installation** |  | 16d | 2027-03-23 | 2027-04-12 |  | 2027-03-01 | 2027-03-05 | 0d |  |  |
| 3.1 | Upend monopile |  | 2d | 2027-03-23 | 2027-03-24 | 2.1 SS | 2027-03-01 | 2027-03-02 | 0d |  | Jack-up installation vessel; Offshore installation crew |
| 3.2 | Position monopile |  | 2d | 2027-03-25 | 2027-03-27 | 3.1 | 2027-03-01 | 2027-03-02 | 0d |  | Jack-up installation vessel; Offshore installation crew |
| 3.3 | Drive monopile |  | 5d | 2027-03-30 | 2027-04-03 | 3.2 | 2027-03-01 | 2027-03-05 | 0d |  | Jack-up installation vessel; Offshore installation crew |
| 3.4 | Verticality check |  | 1d | 2027-04-05 | 2027-04-05 | 3.3 | 2027-03-01 | 2027-03-01 | 0d |  | Survey contractor |
| 3.5 | Install transition piece |  | 3d | 2027-04-06 | 2027-04-08 | 3.4 | 2027-03-01 | 2027-03-03 | 0d |  | Jack-up installation vessel; Offshore installation crew |
| 3.6 | Grouting |  | 3d | 2027-04-09 | 2027-04-12 | 3.5, 2.3 FF+2d | 2027-03-01 | 2027-03-03 | 0d |  | Offshore installation crew; Grout |
| 4 | **4. Finishing** |  | 17d | 2027-04-09 | 2027-04-29 |  | 2027-03-01 | 2027-03-05 | 0d |  |  |
| 4.1 | Scour protection, layer 2 |  | 3d | 2027-04-09 | 2027-04-12 | 3.6 FS-3d | 2027-03-01 | 2027-03-03 | 0d |  | Fall-pipe vessel |
| 4.2 | J-tube installation |  | 3d | 2027-04-13 | 2027-04-15 | 4.1 | 2027-03-01 | 2027-03-03 | 0d |  | Offshore installation crew |
| 4.3 | Platform and railing |  | 5d | 2027-04-16 | 2027-04-21 | 4.2 | 2027-03-01 | 2027-03-05 | 0d |  | Offshore installation crew |
| 4.4 | Cathodic protection |  | 3d | 2027-04-22 | 2027-04-24 | 4.3 | 2027-03-01 | 2027-03-03 | 0d |  | Offshore installation crew |
| 4.5 | Install boat landing |  | 3d | 2027-04-26 | 2027-04-29 | 4.4 | 2027-03-01 | 2027-03-03 | 0d |  | Offshore installation crew |

| ID | Activity | Type | Duration | Start | Finish | Predecessors | Planned start | Planned finish | Total float | Resources |
| --- | --- | --- | --- | --- | --- | --- | --- | --- | --- | --- |
| 5 | **5. Cable & handover** |  | 14d | 2027-04-30 | 2027-05-19 |  | 2027-03-01 | 2027-03-05 | 0d |  |
| 5.1 | Export cable pull-in |  | 5d | 2027-04-30 | 2027-05-07 | 4.5 | 2027-03-01 | 2027-03-05 | 0d | Cable-lay vessel; Offshore installation crew |
| 5.2 | Cable termination |  | 3d | 2027-05-08 | 2027-05-11 | 5.1 | 2027-03-01 | 2027-03-03 | 0d | Offshore installation crew |
| 5.3 | Inspection and survey |  | 3d | 2027-05-12 | 2027-05-14 | 5.2 | 2027-03-01 | 2027-03-03 | 0d | Survey contractor |
| 5.4 | Demobilisation |  | 3d | 2027-05-15 | 2027-05-19 | 5.3 | 2027-03-01 | 2027-03-03 | 0d | Offshore installation crew |
| 5.5 | Foundation complete | milestone | 0d | 2027-05-19 | 2027-05-19 | 5.4 | 2027-03-01 | 2027-03-01 | 0d |  |
