# Construction schedule v1.0

Schedule from an IFC model, 2027-05-07 to 2027-07-07.
Refurbishment & Extension of a Family Home

## Schedule

| ID | Activity | Type | Duration | Start | Finish | Predecessors | Planned start | Planned finish | Total float | Free float | Resources |
| --- | --- | --- | --- | --- | --- | --- | --- | --- | --- | --- | --- |
| 1 | Start of refurbishment | milestone | 0d | 2027-05-07 | 2027-05-07 |  | 2027-05-06 | 2027-05-06 | 3d | 0d |  |
| 2 | **1. Preparation** |  | 8d | 2027-05-07 | 2027-05-19 |  | 2027-05-06 | 2027-05-12 | 0d |  |  |
| 2.1 | Set up site |  | 2d | 2027-05-07 | 2027-05-10 | 1 | 2027-05-06 | 2027-05-07 | 3d |  |  |
| 2.2 | Demolish existing extension |  | 3d | 2027-05-14 | 2027-05-19 | 2.1 | 2027-05-06 | 2027-05-10 | 0d |  |  |
| 3 | **2. Foundations & structure** |  | 16d | 2027-05-20 | 2027-06-10 |  | 2027-05-06 | 2027-05-12 | 0d |  |  |
| 3.1 | Earthworks for extension |  | 3d | 2027-05-20 | 2027-05-24 | 2.2 | 2027-05-06 | 2027-05-10 | 0d |  |  |
| 3.2 | Extension foundations |  | 4d | 2027-05-25 | 2027-05-28 | 3.1 | 2027-05-06 | 2027-05-11 | 0d |  |  |
| 3.3 | Pour ground floor slab |  | 3d | 2027-05-31 | 2027-06-02 | 3.2 | 2027-05-06 | 2027-05-10 | 0d |  |  |
| 3.4 | Build masonry walls |  | 6d | 2027-06-03 | 2027-06-10 | 3.3 | 2027-05-06 | 2027-05-13 | 0d |  | Masonry crew; Bricklayers |
| 3.5 | Install roof structure |  | 4d | 2027-06-07 | 2027-06-10 | 3.4 SS+2d | 2027-05-06 | 2027-05-11 | 0d |  | Carpenters |
| 4 | **3. Fit-out** |  | 17d | 2027-06-11 | 2027-07-05 |  | 2027-05-06 | 2027-05-12 | 0d |  |  |
| 4.1 | Apply roofing |  | 3d | 2027-06-11 | 2027-06-15 | 3.5 | 2027-05-06 | 2027-05-10 | 0d |  | Carpenters |
| 4.2 | Install window frames |  | 4d | 2027-06-16 | 2027-06-21 | 4.1 | 2027-05-06 | 2027-05-11 | 0d |  | Carpenters |
| 4.3 | Plastering |  | 5d | 2027-06-22 | 2027-06-28 | 4.2 | 2027-05-06 | 2027-05-12 | 0d |  | Plasterers |
| 4.4 | Tiling |  | 4d | 2027-06-29 | 2027-07-02 | 4.3 | 2027-05-06 | 2027-05-11 | 0d |  | Tilers |
| 4.5 | Painting |  | 3d | 2027-07-01 | 2027-07-05 | 4.3, 4.4 FF+1d | 2027-05-06 | 2027-05-10 | 0d |  | Painters |
| 5 | **4. Handover** |  | 2d | 2027-07-06 | 2027-07-07 |  | 2027-05-06 | 2027-05-12 | 0d |  |  |
| 5.1 | Final cleaning |  | 1d | 2027-07-06 | 2027-07-06 | 4.5 | 2027-05-06 | 2027-05-06 | 0d |  |  |
| 5.2 | Handover inspection | milestone | 0d | 2027-07-06 | 2027-07-06 | 5.1 | 2027-05-06 | 2027-05-06 | 0d |  |  |
| 5.3 | Final handover with the occupant |  | 1d | 2027-07-07 | 2027-07-07 | 5.2 | 2027-05-06 | 2027-05-06 | 0d |  |  |

Notes:
- 5.2: Mandatory handover inspection; the deadline has ample margin (no conflict).
